# ProyectoABP

Schedule from MS Project, 2017-09-11 to 2018-05-30, costs in €, A marks actual dates.
Schlumberger

## Calendars

- Estándar: Mon-Fri 09:00-13:00, 15:00-19:00; Sat-Sun off.

## Resources

| Resource | Rate |
| --- | --- |
| Alexei | 20 |
| Adrián | 20 |
| Laura | 20 |
| Luis | 20 |
| Pablo | 20 |

## Schedule

| ID | WBS | Task | Type | Duration | Start | Finish | Predecessors | Complete | Actual start | Baseline start | Baseline finish | Baseline duration | Total slack | Free slack | Constraint | Deadline | Resources | Work | Actual work | Cost | Baseline cost | Actual cost |
| --- | --- | --- | --- | --- | --- | --- | --- | --- | --- | --- | --- | --- | --- | --- | --- | --- | --- | --- | --- | --- | --- | --- |
| 1 | 1 | **Hito 0** |  | 28d | 2017-09-11 09:00 | 2017-10-18 19:00 A |  | 100% | 2017-09-18 09:00 |  |  |  |  |  | finish no later than 2017-10-18 19:00 | 2017-10-18 19:00 |  | 123.75h | 123.75h | 2,475 |  | 2,475 |
| 2 | 1.1 | [PM] Rellenar documento de Concepto del proyecto |  | 1d | 2017-09-18 09:00 A | 2017-09-18 19:00 A |  | 100% |  |  |  |  |  |  | start no earlier than 2017-09-18 09:00 | 2017-10-18 19:00 | Adrián [20%]; Alexei [20%]; Laura [20%]; Luis [20%]; Pablo [20%] | 8h | 8h | 160 |  | 160 |
| 3 | 1.2 | [PM] Rellenar versión inicial del documento Especificación |  | 1d | 2017-09-19 09:00 A | 2017-09-19 19:00 A | 2 | 100% |  |  |  |  |  |  |  | 2017-10-18 19:00 | Adrián [20%]; Alexei [20%]; Laura [20%]; Luis [20%]; Pablo [20%] | 8h | 8h | 160 |  | 160 |
| 4 | 1.3 | [PM] Completar y revisar documento Especificación |  | 1d | 2017-09-20 09:00 A | 2017-09-20 19:00 A | 3 | 100% |  |  |  |  |  |  |  | 2017-10-18 19:00 | Adrián [20%]; Alexei [20%]; Laura [20%]; Luis [20%]; Pablo [20%] | 8h | 8h | 160 |  | 160 |
| 5 | 1.4 | **[PM] Elaborar el Presupuesto (hoja de cálculo)** |  | 6d | 2017-09-21 09:00 A | 2017-09-28 19:00 A | 2 | 100% |  |  |  |  |  |  |  | 2017-10-18 19:00 |  | 46.5h | 46.5h | 930 |  | 930 |
| 6 | 1.4.1 | [PM] Rellenar del presupuesto |  | 3.75d | 2017-09-25 11:00 A | 2017-09-28 19:00 A | 8 | 100% |  |  |  |  |  |  |  |  | Adrián [20%]; Alexei [20%]; Laura [20%]; Luis [20%]; Pablo [20%] | 30h | 30h | 600 |  | 600 |
| 7 | 1.4.2 | [PM] Reunirse con profesores |  | 2d | 2017-09-21 09:00 A | 2017-09-22 19:00 A | 2 | 100% |  |  |  |  |  |  |  |  | Adrián [20%]; Alexei [20%]; Laura [20%]; Luis [20%]; Pablo [20%] | 16h | 16h | 320 |  | 320 |
| 8 | 1.4.3 | [PM] Rellenar documentos adicionales |  | 0.25d | 2017-09-25 09:00 A | 2017-09-25 11:00 A | 7 | 100% |  |  |  |  |  |  |  |  | Adrián [5%]; Alexei [5%]; Laura [5%]; Luis [5%]; Pablo [5%] | 0.5h | 0.5h | 10 |  | 10 |
| 9 | 1.5 | [PM] Crear WBS del proyecto en Project |  | 3d | 2017-09-29 09:00 A | 2017-10-03 19:00 A | 5, 6, 7, 8 | 100% |  |  |  |  |  |  |  | 2017-10-18 19:00 | Adrián | 24h | 24h | 480 |  | 480 |
| 10 | 1.6 | [PM] Crear plan general (Tareas y precedencias básicas) en Project |  | 3d | 2017-10-16 09:00 A | 2017-10-18 19:00 A | 9 | 100% |  |  |  |  |  |  | finish no earlier than 2017-10-18 19:00 | 2017-10-18 19:00 | Alexei | 24h | 24h | 480 |  | 480 |
| 11 | 1.7 | [TDS] Elaboración Cue Sheet inicial |  | 7h | 2017-10-04 09:00 A | 2017-10-04 18:00 A |  | 100% |  |  |  |  |  |  | start no earlier than 2017-10-04 09:00 | 2017-10-18 19:00 | Adrián [25%]; Luis [25%]; Pablo [25%] | 5.25h | 5.25h | 105 |  | 105 |
| 12 | 2 | **Hito 1** |  | 53.25d? | 2017-10-19 15:00 | 2018-01-02 17:00 | 1 |  |  |  |  |  | 8.25d | 3.25d |  | 2018-01-12 19:00 |  | 49.67h |  | 993.36 |  |  |
| 13 | 2.1 | **Iteración 1** |  | 9d | 2017-10-19 15:00 | 2017-11-01 13:00 | 1 |  |  | 2017-10-19 15:00 | 2017-11-01 13:00 | 9d | 8.74d | 0.5d |  |  |  | 49.67h |  | 993.36 | 993.36 |  |
| 14 | 2.1.1 | [PM] Registrar tiempos y % de realización de tareas en Project |  | 8.5d | 2017-10-19 15:00 | 2017-10-31 19:00 |  |  |  | 2017-10-19 15:00 | 2017-10-31 19:00 | 8.5d | 9.24d |  | finish no earlier than 2017-10-31 19:00 |  | Adrián [1%]; Alexei [1%]; Laura [1%]; Luis [1%]; Pablo [1%] | 3.4h |  | 68 | 68 |  |
| 15 | 2.1.2 | [PD] Bocetar cartel |  | 0.75d | 2017-10-20 09:00 | 2017-10-20 17:00 |  |  |  | 2017-10-20 09:00 | 2017-10-20 17:00 | 0.75d | 15.99d | 7.25d | start no earlier than 2017-10-20 09:00 |  | Alexei [25%]; Laura [25%]; Luis [25%] | 4.5h |  | 90 | 90 |  |
| 16 | 2.1.3 | [TAG] Instalar librería matemática (glm/glmatriz) |  | 0.5d | 2017-10-24 09:00 | 2017-10-24 13:00 |  |  |  | 2017-10-24 09:00 | 2017-10-24 13:00 | 0.5d | 14.74d |  | start no earlier than 2017-10-24 09:00 |  | Adrián [8%]; Alexei [8%]; Laura [8%]; Luis [8%]; Pablo [8%] | 1.6h |  | 32 | 32 |  |
| 17 | 2.1.4 | [TAG] Instalar librería de lectura de mallas (assimp…) |  | 1.25d | 2017-10-24 17:00 | 2017-10-25 19:00 |  |  |  | 2017-10-24 17:00 | 2017-10-25 19:00 | 1.25d | 13.24d |  | finish no earlier than 2017-10-25 19:00 |  | Adrián [13%]; Alexei [13%]; Laura [13%]; Luis [13%]; Pablo [13%] | 6.5h |  | 130 | 130 |  |
| 18 | 2.1.5 | [TAG] Instalar librería de entrada/salida (SFML…) |  | 1.25d | 2017-10-24 17:00 | 2017-10-25 19:00 |  |  |  | 2017-10-24 17:00 | 2017-10-25 19:00 | 1.25d | 13.24d |  | finish no earlier than 2017-10-25 19:00 |  | Adrián [13%]; Alexei [13%]; Laura [13%]; Luis [13%]; Pablo [13%] | 6.5h |  | 130 | 130 |  |
| 19 | 2.1.6 | [PM] Detallar plan iteraciones del mes de Noviembre. Creación Subtareas y precedencias en Project |  | 2.4d | 2017-10-24 09:00 | 2017-10-26 12:12 | 10 |  |  | 2017-10-24 09:00 | 2017-10-26 12:12 | 2.4d | 9.94d | 0.6d | start no earlier than 2017-10-24 09:00 |  | Adrián [21%]; Alexei [21%]; Laura [5%]; Luis [5%]; Pablo [5%] | 10.94h |  | 218.88 | 218.88 |  |
| 20 | 2.1.7 | [TDS] Añadir elementos sonoros a la Cue Sheet |  | 0.25d | 2017-10-26 09:00 | 2017-10-26 11:00 | 11 |  |  | 2017-10-26 09:00 | 2017-10-26 11:00 | 0.25d | 12.99d |  | start no earlier than 2017-10-26 09:00 |  | Luis [13%]; Pablo [13%]; Adrián [13%] | 0.78h |  | 15.6 | 15.6 |  |
| 21 | 2.1.8 | [PD] Bocetar logo |  | 0.75d | 2017-10-27 09:00 | 2017-10-27 17:00 |  |  |  | 2017-10-27 09:00 | 2017-10-27 17:00 | 0.75d | 10.99d | 2.25d | start no earlier than 2017-10-27 09:00 |  | Alexei [25%]; Laura [25%]; Luis [25%] | 4.5h |  | 90 | 90 |  |
| 22 | 2.1.9 | [PM] Detallar plan iteraciones del mes de Noviembre. Asignar recursos a las tareas en Project |  | 2.4d | 2017-10-27 09:00 | 2017-10-31 12:12 | 19 |  |  | 2017-10-27 09:00 | 2017-10-31 12:12 | 2.4d | 9.34d | 0.6d | start no earlier than 2017-10-27 09:00 |  | Adrián [21%]; Alexei [21%]; Laura [5%]; Luis [5%]; Pablo [5%] | 10.94h |  | 218.88 | 218.88 |  |
| 23 | 2.1.10 | [PM] Realizar informe iteración 1 |  | 0.5d | 2017-11-01 09:00 | 2017-11-01 13:00 | 19, 22, 15, 21 |  |  | 2017-11-01 09:00 | 2017-11-01 13:00 | 0.5d | 8.74d | 0d | start no earlier than 2017-11-01 09:00 |  |  |  |  |  |  |  |
| 24 | 2.1.11 | Objetivo Iteración 1 | milestone | 0d | 2017-11-01 13:00 | 2017-11-01 13:00 | 23 |  |  | 2017-11-01 13:00 | 2017-11-01 13:00 | 0d | 8.74d |  |  |  |  |  |  |  |  |  |

| ID | WBS | Task | Type | Duration | Start | Finish | Predecessors | Total slack | Free slack |
| --- | --- | --- | --- | --- | --- | --- | --- | --- | --- |
| 25 | 2.2 | **Iteración 2** |  | 10d | 2017-11-02 09:00 | 2017-11-15 19:00 | 13 |  |  |
| 26 | 2.2.1 | [PM] Registrar tiempos y % de realización de tareas en Project |  | 0.45d | 2017-11-02 09:00 | 2017-11-02 12:36 |  | 10.92d | 2.68d |
| 27 | 2.2.2 | [V1] Documento de diseño de mecánicas de los NPCs |  | 1.25d | 2017-11-02 09:00 | 2017-11-03 11:00 |  | 10.12d | 1.88d |
| 28 | 2.2.3 | [V1] Documento de diseño de toma de decisión: espacio y métodos |  | 1.88d | 2017-11-02 09:00 | 2017-11-03 18:02 |  | 9.49d | 1.25d |
| 29 | 2.2.4 | [V1] Documento de diseño técnico del motor de IA |  | 1.88d | 2017-11-02 09:00 | 2017-11-03 18:02 |  | 9.49d | 1.25d |
| 30 | 2.2.5 | [V1] Diseño de requerimientos y funciones de red |  | 1.25d | 2017-11-02 09:00 | 2017-11-03 11:00 |  | 10.12d | 1.88d |
| 31 | 2.2.6 | [V1] Diseño técnico del motor de red |  | 1.88d | 2017-11-02 09:00 | 2017-11-03 18:02 |  | 9.49d | 1.25d |
| 32 | 2.2.7 | [RV] Boceto de los personajes |  | 1d | 2017-11-02 09:00 | 2017-11-02 19:00 |  | 10.37d | 2.13d |
| 33 | 2.2.8 | [V2] Control del player por motor de físicas 2D, dynamic o kinematic |  | 3.13d | 2017-11-02 09:00 | 2017-11-07 10:02 |  | 8.24d | 0d |
| 34 | 2.2.9 | Objetivo iteración 2 | milestone | 0d | 2017-11-07 10:02 | 2017-11-07 10:02 | 26, 27, 28, 29, 30, 31, 32, 33 | 8.24d |  |
| 35 | 2.3 | **Iteración 3** |  | 10d | 2017-11-16 09:00 | 2017-11-29 19:00 | 25 |  |  |
| 36 | 2.3.1 | [PM] Detallar plan iteraciones del mes de Diciembre. Creación Subtareas y precedencias en Project |  | 2.4d | 2017-11-16 09:00 | 2017-11-20 12:12 | 22 | 10.32d | 0d |
| 37 | 2.3.2 | [PM] Detallar plan iteraciones del mes de Diciembre. Asignar recursos a las tareas en Project |  | 2.4d | 2017-11-20 12:12 | 2017-11-22 17:24 | 36 | 10.32d | 8.95d |
| 38 | 2.3.3 | [PM] Registrar tiempos y % de realización de tareas en Project |  | 0.45d | 2017-11-16 09:00 | 2017-11-16 12:36 | 26 | 14.67d | 9.55d |
| 39 | 2.3.4 | [PM] Rellenar documento Gestión de riesgos |  | 2.4d | 2017-11-16 09:00 | 2017-11-20 12:12 |  | 12.72d | 11.35d |
| 40 | 2.3.5 | [V1] Sistema de toma de decisión con Lógica Difusa |  | 6.25d | 2017-11-16 09:00 | 2017-11-24 11:00 |  | 1.37d | 0d |
| 41 | 2.3.6 | [V1] Sistema de Waypoints para pathfinding continuo |  | 7.5d | 2017-11-24 11:00 | 2017-12-05 17:00 | 40 | 1.37d | 0d |
| 42 | 2.3.7 | [V2] Mecánicas de acción |  | 1.88d | 2017-11-16 09:00 | 2017-11-17 18:02 |  | 13.24d | 11.87d |
| 43 | 2.3.8 | [V2] Formato propio para la definición de los niveles (documento con la especificación del formato) |  | 1.25d | 2017-11-16 09:00 | 2017-11-17 11:00 |  | 13.87d | 12.5d |
| 44 | 2.3.9 | [RV] Bocetos de los elementos |  | 1d | 2017-11-16 09:00 | 2017-11-16 19:00 |  | 14.12d | 12.75d |
| 45 | 2.3.10 | Objetivo iteración 3 | milestone | 0d | 2017-12-05 17:00 | 2017-12-05 17:00 | 36, 37, 38, 39, 40, 41, 42, 43, 44 | 1.37d |  |
| 46 | 2.4 | **Iteración 4** |  | 10d | 2017-11-30 09:00 | 2017-12-13 19:00 | 35 |  |  |
| 47 | 2.4.1 | [PM] Registrar tiempos y % de realización de tareas en Project |  | 0.45d | 2017-11-30 09:00 | 2017-11-30 12:36 | 38 | 17.8d | 9.55d |
| 48 | 2.4.2 | [V1] Sistema de gestión de eventos (Trigger System/Event Manager) |  | 6.88d | 2017-11-30 09:00 | 2017-12-08 18:02 |  | 5.12d | 0d |
| 49 | 2.4.3 | [V1] Sistema de percepción sensorial (vista, oído, olfato, canales…) |  | 6.25d | 2017-12-08 18:02 | 2017-12-19 10:02 | 48 | 5.12d | 0d |
| 50 | 2.4.4 | [V2] Utilización de propiedades físicas en las mecánicas jugables |  | 1.88d | 2017-11-30 09:00 | 2017-12-01 18:02 |  | 16.37d | 11.25d |
| 51 | 2.4.5 | [V2] Implementación de cámara de seguimiento |  | 1.88d | 2017-11-30 09:00 | 2017-12-01 18:02 |  | 16.37d | 11.25d |
| 52 | 2.4.6 | [RV] Bocetos del entorno |  | 1d | 2017-11-30 09:00 | 2017-11-30 19:00 |  | 17.25d | 12.13d |
| 53 | 2.4.7 | Objetivo iteración 4 | milestone | 0d | 2017-12-19 10:02 | 2017-12-19 10:02 | 47, 48, 49, 50, 51, 52 | 5.12d |  |

| ID | WBS | Task | Type | Duration | Start | Finish | Predecessors | Total slack | Free slack |
| --- | --- | --- | --- | --- | --- | --- | --- | --- | --- |
| 54 | 2.5 | **Iteración 5** |  | 7d | 2017-12-14 09:00 | 2017-12-22 19:00 | 46 |  |  |
| 55 | 2.5.1 | [PM] Registrar tiempos y % de realización de tareas en Project |  | 0.45d | 2017-12-14 09:00 | 2017-12-14 12:36 | 47 | 21.55d | 13.3d |
| 56 | 2.5.2 | [PM] Comparar la planificación prevista y real en Project hito 1 |  | 2.25d | 2017-12-14 09:00 | 2017-12-18 11:00 |  | 14.5d | 0d |
| 57 | 2.5.3 | [PM] Aplicar el modelo EVA en Project |  | 2.25d | 2017-12-14 09:00 | 2017-12-18 11:00 |  | 19.75d | 11.5d |
| 58 | 2.5.4 | [PM] Confeccionar Informes de iteración e informe resumen de Hito 1 |  | 2.25d | 2017-12-18 11:00 | 2017-12-20 13:00 | 56 | 14.5d | 0d |
| 59 | 2.5.5 | [PM] Elaborar la presentación del Hito 1 |  | 1.5d | 2017-12-20 15:00 | 2017-12-21 19:00 | 58 | 14.5d | 0d |
| 60 | 2.5.6 | [PM] Exponer la presentación del Hito 1 |  | 1.5d | 2017-12-22 09:00 | 2017-12-25 13:00 | 59 | 14.5d | 6.25d |
| 61 | 2.5.7 | [V1] Sistema de toma de decisión con Behaviour Trees |  | 4.38d | 2017-12-14 09:00 | 2017-12-20 12:02 |  | 17.62d | 9.37d |
| 62 | 2.5.8 | [V2] Diseño e implementación de la arquitectura basada en componentes (diagrama de clases e implementación) |  | 11.25d | 2017-12-14 09:00 | 2017-12-29 11:00 |  | 8.25d | 0d |
| 63 | 2.5.9 | [V2] Mecánicas básicas entidades sin IA |  | 2.5d | 2017-12-29 11:00 | 2018-01-02 17:00 | 62 | 8.25d | 0d |
| 64 | 2.5.10 | [TDS] Síntesis |  | 3.75d | 2017-12-15 18:02 | 2017-12-21 16:02 | 68 | 12.62d | 0d |
| 65 | 2.5.11 | [TDS] Grabaciones propias |  | 3.75d | 2017-12-15 18:02 | 2017-12-21 16:02 | 68 | 16.37d | 8.12d |
| 66 | 2.5.12 | [TDS] Sonidos externos |  | 3.75d | 2017-12-15 18:02 | 2017-12-21 16:02 | 68 | 16.37d | 8.12d |
| 67 | 2.5.13 | [TDS] Música |  | 3.75d | 2017-12-21 16:02 | 2017-12-27 12:02 | 64 | 12.62d | 4.37d |
| 68 | 2.5.14 | [TDS] Cue Sheet |  | 1.88d | 2017-12-14 09:00 | 2017-12-15 18:02 |  | 12.62d | 0d |
| 69 | 2.5.15 | [TDS] Hoja de metadatos |  | 1.88d | 2017-12-14 09:00 | 2017-12-15 18:02 |  | 20.12d | 11.87d |
| 70 | 2.5.16 | [TDS] Integración del motor de audio en el juego con prueba de concepto |  | 3.75d | 2017-12-14 09:00 | 2017-12-19 17:00 |  | 18.25d | 10d |
| 71 | 2.5.17 | [PD] Vídeo con animación del logo de la empresa |  | 7.5d | 2017-12-14 09:00 | 2017-12-25 13:00 |  | 14.5d | 6.25d |
| 72 | 2.5.18 | Objetivo iteración 5 | milestone | 0d | 2018-01-02 17:00 | 2018-01-02 17:00 | 55, 56, 57, 58, 59, 60, 61, 62, 63, 64, 65, 66, 67, 68, 69, 70, 71 | 8.25d |  |
| 73 | 3 | **Hito 2** |  | 16d | 2018-01-07 09:00 | 2018-01-26 19:00 | 12 |  |  |
| 74 | 3.1 | [PM] Revisar especificación proyecto |  | 3d | 2018-01-08 09:00 | 2018-01-10 19:00 |  | 77.5d |  |
| 75 | 3.2 | [PM] Reestimar proyecto |  | 3d | 2018-01-08 09:00 | 2018-01-10 19:00 |  | 77.5d |  |
| 76 | 3.3 | [PM] Detallar plan iteraciones del mes de Enero. Creación Subtareas y precedencias en Project |  | 1d | 2018-01-08 09:00 | 2018-01-08 19:00 |  | 79.5d |  |
| 77 | 3.4 | [PM] Detallar plan iteraciones del mes de Enero. Asignar recursos a las tareas en Project |  | 1d | 2018-01-08 09:00 | 2018-01-08 19:00 |  | 79.5d |  |
| 78 | 3.5 | [PM] Registrar tiempos y % de realización de tareas en Project |  | 0.63d | 2018-01-08 09:00 | 2018-01-08 16:02 |  | 79.87d |  |
| 79 | 3.6 | [PM] Comparar la planificación prevista y real en Project hito 2 |  | 0.63d | 2018-01-08 09:00 | 2018-01-08 16:02 |  | 79.87d |  |
| 80 | 3.7 | [PM] Confeccionar Informes de iteración e informe resumen de Hito 2 |  | 0.63d | 2018-01-08 09:00 | 2018-01-08 16:02 |  | 79.87d |  |
| 81 | 3.8 | [V1] Sistema de depuración visual in-game de la IA |  | 3.75d | 2018-01-08 09:00 | 2018-01-11 17:00 |  | 76.75d |  |
| 82 | 3.9 | [V1] Multijugador en tiempo real |  | 11.25d | 2018-01-08 09:00 | 2018-01-23 11:00 |  | 69.25d |  |
| 83 | 3.10 | [V2] Power-ups y elementos adicionales |  | 5d | 2018-01-08 09:00 | 2018-01-12 19:00 |  | 75.5d |  |
| 84 | 3.11 | [V2] Creación de un cargador de niveles |  | 3.13d | 2018-01-08 09:00 | 2018-01-11 10:02 |  | 77.37d |  |
| 85 | 3.12 | [V2] Gestión de colisiones de la cámara (sistema de depuración para ver colisiones) |  | 1.88d | 2018-01-08 09:00 | 2018-01-09 18:02 |  | 78.62d |  |
| 86 | 3.13 | [V2] Integración de librería para GUI |  | 0.63d | 2018-01-08 09:00 | 2018-01-08 16:02 |  | 79.87d |  |

| ID | WBS | Task | Duration | Start | Finish | Predecessors | Total slack |
| --- | --- | --- | --- | --- | --- | --- | --- |
| 87 | 4 | **Hito 3** | 35d | 2018-02-07 09:00 | 2018-03-27 19:00 | 73 |  |
| 88 | 4.1 | [PM] Detallar plan iteraciones del mes de Febrero-Marzo. Creación Subtareas y precedencias en Project | 1d | 2018-02-07 09:00 | 2018-02-07 19:00 |  | 68.75d |
| 89 | 4.2 | [PM] Detallar plan iteraciones del mes de Febrero-Marzo Asignar recursos a las tareas en Project | 1d | 2018-02-07 09:00 | 2018-02-07 19:00 |  | 68.75d |
| 90 | 4.3 | [PM] Registrar tiempos y % de realización de tareas en Project | 0.63d | 2018-02-07 09:00 | 2018-02-07 16:02 |  | 69.12d |
| 91 | 4.4 | [PM] Comparar la planificación prevista y real en Project hito 3 | 0.63d | 2018-02-07 09:00 | 2018-02-07 16:02 |  | 69.12d |
| 92 | 4.5 | [PM] Confeccionar Informes de iteración e informe resumen de Hito 3 | 0.63d | 2018-02-07 09:00 | 2018-02-07 16:02 |  | 69.12d |
| 93 | 4.6 | [PM] Elaborar la presentación del Hito 3 | 0.75d | 2018-02-07 09:00 | 2018-02-07 17:00 |  | 69d |
| 94 | 4.7 | [PM] Exponer la presentación del Hito 3 | 0.75d | 2018-02-07 09:00 | 2018-02-07 17:00 |  | 69d |
| 95 | 4.8 | [TAG] Estructura básica del nodo (array de hijos, puntero a padre, puntero a entidad, funcionalidad básica -constructor, destructor, gets, sets, manejo de hijos….) | 0.5d | 2018-02-07 09:00 | 2018-02-07 13:00 |  | 69.25d |
| 96 | 4.9 | [TAG] Recorrido-dibujado del árbol | 0.5d | 2018-02-07 09:00 | 2018-02-07 13:00 |  | 69.25d |
| 97 | 4.10 | [TAG] Estructura básica de la entidad (Constructor, destructor, funciones… todas virtuales, vacías) | 0.5d | 2018-02-07 09:00 | 2018-02-07 13:00 |  | 69.25d |
| 98 | 4.11 | [TAG] Matrices (model, view, projection) y pila estáticas y su manejo | 0.63d | 2018-02-07 09:00 | 2018-02-07 16:02 |  | 69.12d |
| 99 | 4.12 | [TAG] Estructura básica de la transformación (Constructor, destructor, matriz transformación…) | 0.5d | 2018-02-07 09:00 | 2018-02-07 13:00 |  | 69.25d |
| 100 | 4.13 | [TAG] Operaciones de transformación (trasladar, rotar, escalar, identidad, trasponer, invertir, todas con GLM) | 0.75d | 2018-02-07 09:00 | 2018-02-07 17:00 |  | 69d |
| 101 | 4.14 | [TAG] Dibujado (begindraw, enddraw, manejo pila y matriz model) | 0.75d | 2018-02-07 09:00 | 2018-02-07 17:00 |  | 69d |
| 102 | 4.15 | [TAG] Estructura básica de la cámara (Constructor, destructor, matriz proyección) | 0.38d | 2018-02-07 09:00 | 2018-02-07 12:02 |  | 69.37d |
| 103 | 4.16 | [TAG] Rellenar matriz perspectiva (con glm) | 0.25d | 2018-02-07 09:00 | 2018-02-07 11:00 |  | 69.5d |
| 104 | 4.17 | [TAG] Estructura básica de la luz (Constructor, destructor) | 0.38d | 2018-02-07 09:00 | 2018-02-07 12:02 |  | 69.37d |
| 105 | 4.18 | [TAG] Datos y funciones luz puntual | 0.38d | 2018-02-07 09:00 | 2018-02-07 12:02 |  | 69.37d |
| 106 | 4.19 | [TAG] Estructura básica de la malla (Constructor, destructor) | 0.38d | 2018-02-07 09:00 | 2018-02-07 12:02 |  | 69.37d |
| 107 | 4.20 | [TAG] Datos de mallas, texturas, materiales… (llamadas al gestor de recursos) | 0.5d | 2018-02-07 09:00 | 2018-02-07 13:00 |  | 69.25d |
| 108 | 4.21 | [TAG] Dibujado (begindraw, enddraw, matriz model…) | 0.63d | 2018-02-07 09:00 | 2018-02-07 16:02 |  | 69.12d |
| 109 | 4.22 | [TAG] Estructura básica del gestor de recursos (constructor, destructor, vectores de recursos) | 0.5d | 2018-02-07 09:00 | 2018-02-07 13:00 |  | 69.25d |
| 110 | 4.23 | [TAG] Obtener recurso (gestión adecuada de memoria) | 0.75d | 2018-02-07 09:00 | 2018-02-07 17:00 |  | 69d |
| 111 | 4.24 | [TAG] Estructura básica del recurso (constructor, destructor. Es virtual, vacío) | 0.38d | 2018-02-07 09:00 | 2018-02-07 12:02 |  | 69.37d |
| 112 | 4.25 | [TAG] Estructura básica de la malla (constructor, destructor) | 0.5d | 2018-02-07 09:00 | 2018-02-07 13:00 |  | 69.25d |
| 113 | 4.26 | [TAG] Lectura de disco (con assimp) | 0.75d | 2018-02-07 09:00 | 2018-02-07 17:00 |  | 69d |
| 114 | 4.27 | [TAG] Creación de buffers de vértices, normales, índices… y relleno | 1d | 2018-02-07 09:00 | 2018-02-07 19:00 |  | 68.75d |
| 115 | 4.28 | [TAG] Dibujado de las mallas (draw, con paso de los buffers a OpenGL) | 1d | 2018-02-07 09:00 | 2018-02-07 19:00 |  | 68.75d |
| 116 | 4.29 | [TAG] Estructura básica de la textura (constructor, destructor) | 0.25d | 2018-02-07 09:00 | 2018-02-07 11:00 |  | 69.5d |
| 117 | 4.30 | [TAG] Leer de disco (con librería) y rellenar buffers | 0.75d | 2018-02-07 09:00 | 2018-02-07 17:00 |  | 69d |
| 118 | 4.31 | [TAG] Dibujado (preparar las texturas y cargarlas en OpenGL) | 1d | 2018-02-07 09:00 | 2018-02-07 19:00 |  | 68.75d |
| 119 | 4.32 | [TAG] Estructura básica del material (constructor, destructor) | 0.25d | 2018-02-07 09:00 | 2018-02-07 11:00 |  | 69.5d |
| 120 | 4.33 | [TAG] Leer de disco (con librería o con parser propio) y rellenar valores | 0.63d | 2018-02-07 09:00 | 2018-02-07 16:02 |  | 69.12d |
| 121 | 4.34 | [TAG] Dibujado (preparar los materiales y cargarlos en OpenGL) | 0.5d | 2018-02-07 09:00 | 2018-02-07 13:00 |  | 69.25d |
| 122 | 4.35 | [TAG] Estructura básica del shader (constructor, destructor) | 0.5d | 2018-02-07 09:00 | 2018-02-07 13:00 |  | 69.25d |
| 123 | 4.36 | [TAG] Lectura de disco (con parser propio) y guardarlo | 0.88d | 2018-02-07 09:00 | 2018-02-07 18:02 |  | 68.87d |
| 124 | 4.37 | [TAG] Estructura básica de la fachada (constructor, destructor, inicialización motor y openGL) | 0.75d | 2018-02-07 09:00 | 2018-02-07 17:00 |  | 69d |
| 125 | 4.38 | [TAG] Funciones para crear cámaras y gestionarlas (manejo de las cámaras, registro, cálculo de la matriz view) | 1.25d | 2018-02-07 09:00 | 2018-02-08 11:00 |  | 68.5d |
| 126 | 4.39 | [TAG] Funciones para crear luces y gestionarlas (manejo de las luces registro, cálculo de la matriz light) | 0.75d | 2018-02-07 09:00 | 2018-02-07 17:00 |  | 69d |
| 127 | 4.40 | [TAG] Funciones para crear transformaciones (creación de varios nodos con las transformaciones, manejo de las transformaciones) | 0.75d | 2018-02-07 09:00 | 2018-02-07 17:00 |  | 69d |
| 128 | 4.41 | [TAG] Funciones para crear mallas y animaciones | 0.75d | 2018-02-07 09:00 | 2018-02-07 17:00 |  | 69d |
| 129 | 4.42 | [TAG] Funciones para crear shaders y gestionarlos | 0.75d | 2018-02-07 09:00 | 2018-02-07 17:00 |  | 69d |
| 130 | 4.43 | [TAG] Shader básico (Sombreado de Phong, reflexión de Phong) con materiales | 0.63d | 2018-02-07 09:00 | 2018-02-07 16:02 |  | 69.12d |
| 131 | 4.44 | [TAG] Integración con la aplicación | 3.75d | 2018-02-07 09:00 | 2018-02-12 17:00 |  | 66d |
| 132 | 4.45 | [TAG] Realización de una fachada genérica | 1.88d | 2018-02-07 09:00 | 2018-02-08 18:02 |  | 67.87d |
| 133 | 4.46 | [V1] Gestión de recursos de IA con Level-of-Detail (LoD) | 6.25d | 2018-02-07 09:00 | 2018-02-15 11:00 |  | 63.5d |
| 134 | 4.47 | [V1] Sistema de predicción de movimiento multijugador en tiempo real | 3.75d | 2018-02-07 09:00 | 2018-02-12 17:00 |  | 66d |
| 135 | 4.48 | [V1] Sistema de depuración visual del motor de Red | 3.75d | 2018-02-07 09:00 | 2018-02-12 17:00 |  | 66d |
| 136 | 4.49 | [V2] Diseño y creación de niveles | 5d | 2018-02-07 09:00 | 2018-02-13 19:00 |  | 64.75d |
| 137 | 4.50 | [V2] Implementación de menús | 3.75d | 2018-02-07 09:00 | 2018-02-12 17:00 |  | 66d |
| 138 | 4.51 | [V2] Implementación del HUD | 2.5d | 2018-02-07 09:00 | 2018-02-09 13:00 |  | 67.25d |
| 139 | 4.52 | [V2] Implementación de clipping (comparativa de FPS con/sin oclusiones) | 1.25d | 2018-02-07 09:00 | 2018-02-08 11:00 |  | 68.5d |
| 140 | 4.53 | [V2] Oclusiones mediante tecnicas de rasterización (comparativa de FPS con/sin oclusiones) | 1.25d | 2018-02-07 09:00 | 2018-02-08 11:00 |  | 68.5d |
| 141 | 4.54 | [V2] Sistema de Level-Of-Detail (LoD) para la selección de la malla gráfica de los objetos | 1.88d | 2018-02-07 09:00 | 2018-02-08 18:02 |  | 67.87d |
| 142 | 4.55 | [V2] Sistema de Level-Of-Detail continuo (CLoD) para el terreno | 3.13d | 2018-02-07 09:00 | 2018-02-12 10:02 |  | 66.62d |
| 143 | 4.56 | [V2] Creación e implementación del skybox | 3.13d | 2018-02-07 09:00 | 2018-02-12 10:02 |  | 66.62d |
| 144 | 4.57 | [TDS] Resto de la biblioteca (máx. 1/3), cuesheet y metadatos finales | 7.5d | 2018-02-07 09:00 | 2018-02-16 13:00 |  | 62.25d |
| 145 | 4.58 | [PD] Cartel juego/proyecto | 3.75d | 2018-02-07 09:00 | 2018-02-12 17:00 |  | 66d |
| 146 | 4.59 | [PD] Trailer juego/proyecto | 11.25d | 2018-02-07 09:00 | 2018-02-22 11:00 |  | 58.5d |
| 147 | 4.60 | [RV] Modelado de los personajes | 7.5d | 2018-02-07 09:00 | 2018-02-16 13:00 |  | 62.25d |
| 148 | 4.61 | [RV] Texturizado de los personajes | 6d | 2018-02-07 09:00 | 2018-02-14 19:00 |  | 63.75d |
| 149 | 4.62 | [RV] Modelado del entorno y elementos | 11d | 2018-02-07 09:00 | 2018-02-21 19:00 |  | 58.75d |

| ID | WBS | Task | Duration | Start | Finish | Predecessors | Total slack |
| --- | --- | --- | --- | --- | --- | --- | --- |
| 150 | 5 | **Hito 4** | 46d | 2018-03-28 09:00 | 2018-05-30 19:00 | 87 |  |
| 151 | 5.1 | [PM] Detallar plan iteraciones del mes de Abril-Mayo. Creación Subtareas y precedencias en Project | 1d | 2018-03-28 09:00 | 2018-03-28 19:00 |  | 45d |
| 152 | 5.2 | [PM] Detallar plan iteraciones del mes de Abril-Mayo. Asignar recursos a las tareas en Project | 1d | 2018-03-28 09:00 | 2018-03-28 19:00 |  | 45d |
| 153 | 5.3 | [PM] Registrar tiempos y % de realización de tareas en Project | 0.63d | 2018-03-28 09:00 | 2018-03-28 16:02 |  | 45.37d |
| 154 | 5.4 | [PM] Comparar la planificación prevista y real en Project hito 4 | 0.63d | 2018-03-28 09:00 | 2018-03-28 16:02 |  | 45.37d |
| 155 | 5.5 | [PM] Confeccionar Informes de iteración e informe resumen de Hito 4 | 0.63d | 2018-03-28 09:00 | 2018-03-28 16:02 |  | 45.37d |
| 156 | 5.6 | [PM] Elaborar la presentación del Hito 4 | 0.75d | 2018-03-28 09:00 | 2018-03-28 17:00 |  | 45.25d |
| 157 | 5.7 | [PM] Exponer la presentación del Hito 4 | 0.75d | 2018-03-28 09:00 | 2018-03-28 17:00 |  | 45.25d |
| 158 | 5.8 | [TAG] Datos y funciones luz dirigida | 0.63d | 2018-03-28 09:00 | 2018-03-28 16:02 |  | 45.37d |
| 159 | 5.9 | [TAG] Otros tipos de luces | 11.25d | 2018-03-28 09:00 | 2018-04-12 11:00 |  | 34.75d |
| 160 | 5.10 | [TAG] Estructura básica de la animación (Constructor, destructor) | 0.5d | 2018-03-28 09:00 | 2018-03-28 13:00 |  | 45.5d |
| 161 | 5.11 | [TAG] Datos de animaciones, mallas, texturas, materiales (multiples, con llamadas al gestor de recursos) | 0.63d | 2018-03-28 09:00 | 2018-03-28 16:02 |  | 45.37d |
| 162 | 5.12 | [TAG] Getión temporal de las animaciones (frames…) | 0.75d | 2018-03-28 09:00 | 2018-03-28 17:00 |  | 45.25d |
| 163 | 5.13 | [TAG] Dibujado (begindraw, enddraw, matriz model…) | 0.75d | 2018-03-28 09:00 | 2018-03-28 17:00 |  | 45.25d |
| 164 | 5.14 | [TAG] Shader Cartoon | 1.88d | 2018-03-28 09:00 | 2018-03-29 18:02 |  | 44.12d |
| 165 | 5.15 | [TAG] Shader light mapping | 1.88d | 2018-03-28 09:00 | 2018-03-29 18:02 |  | 44.12d |
| 166 | 5.16 | [TAG] Shader Deferred Shading | 2.75d | 2018-03-28 09:00 | 2018-03-30 17:00 |  | 43.25d |
| 167 | 5.17 | [TAG] Bounding boxes (incluye retocar nodos, entidades y recursos malla) | 1.5d | 2018-03-28 09:00 | 2018-03-29 13:00 |  | 44.5d |
| 168 | 5.18 | [TAG] Backface culling | 0.5d | 2018-03-28 09:00 | 2018-03-28 13:00 |  | 45.5d |
| 169 | 5.19 | [TAG] Frustum culling | 2.5d | 2018-03-28 09:00 | 2018-03-30 13:00 |  | 43.5d |
| 170 | 5.20 | [TAG] Shadow mapping | 3.13d | 2018-03-28 09:00 | 2018-04-02 10:02 |  | 42.87d |
| 171 | 5.21 | [TAG] Sombras volumétricas | 4.38d | 2018-03-28 09:00 | 2018-04-03 12:02 |  | 41.62d |
| 172 | 5.22 | [TAG] Sistema de partículas (sólo la incorporación en el motor) | 3.13d | 2018-03-28 09:00 | 2018-04-02 10:02 |  | 42.87d |
| 173 | 5.23 | [TAG] Billboards (sólo la parte de visualización) | 1.25d | 2018-03-28 09:00 | 2018-03-29 11:00 |  | 44.75d |
| 174 | 5.24 | [TAG] Skybox (sólo la incorporación en el motor) | 0.63d | 2018-03-28 09:00 | 2018-03-28 16:02 |  | 45.37d |
| 175 | 5.25 | [TAG] Otras | 4d | 2018-03-28 09:00 | 2018-04-02 19:00 |  | 42d |
| 176 | 5.26 | [V2] Multiplataforma con soporte para Windows | 5d | 2018-03-28 09:00 | 2018-04-03 19:00 |  | 41d |
| 177 | 5.27 | [V2] Implementación de nubes | 1.88d | 2018-03-28 09:00 | 2018-03-29 18:02 |  | 44.12d |
| 178 | 5.28 | [V2] Implementación de sistemas de partículas | 1.88d | 2018-03-28 09:00 | 2018-03-29 18:02 |  | 44.12d |
| 179 | 5.29 | [TDS] Integración de sonido y música en el juego | 3.75d | 2018-03-28 09:00 | 2018-04-02 17:00 |  | 42.25d |
| 180 | 5.30 | [TDS] Post producción (mezcla y masterización in-game) | 3.75d | 2018-03-28 09:00 | 2018-04-02 17:00 |  | 42.25d |
| 181 | 5.31 | [PD] Making of juego/proyecto | 11.25d | 2018-03-28 09:00 | 2018-04-12 11:00 |  | 34.75d |
| 182 | 5.32 | [PD] Créditos | 3.75d | 2018-03-28 09:00 | 2018-04-02 17:00 |  | 42.25d |
| 183 | 5.33 | [RV] Rigging de los personajes | 1d | 2018-03-28 09:00 | 2018-03-28 19:00 |  | 45d |
| 184 | 5.34 | [RV] Captura de movimiento | 5d | 2018-03-28 09:00 | 2018-04-03 19:00 |  | 41d |
| 185 | 5.35 | [RV] Animación de los personajes | 10d | 2018-03-28 09:00 | 2018-04-10 19:00 |  | 36d |
| 186 | 5.36 | [RV] Texturizado del entorno y elementos | 6.5d | 2018-03-28 09:00 | 2018-04-05 13:00 |  | 39.5d |
